# Project.Hind

Schedule from MS Project, 2013-03-22 to 2015-10-02, costs in €.

## Calendars

- Standard: Mon-Fri 08:00-12:00, 13:00-17:00; Sat-Sun off.

## Resources

| Resource | Rate |
| --- | --- |
| DIRECTOR PROYECTO | 60 |
| INGENIERO AGRONOMO | 48 |
| ECONOMISTA | 45 |
| SOCIOLOGO | 45 |
| INGENIERO EN MEDIO AMBIENTE | 45 |
| EXPERTO GIS |  |
| ADMINISTRATIVO | 30 |
| TECNICOS DE APOYO | 35 |

## Schedule

| ID | WBS | Task | Type | Duration | Start | Finish | Predecessors | Total slack | Free slack | Resources | Work | Cost |
| --- | --- | --- | --- | --- | --- | --- | --- | --- | --- | --- | --- | --- |
| 1 | 1 | **Total Proyecto** |  | 660d | 2013-03-22 | 2015-10-02 |  |  |  |  | 7076h | 300,238 |
| 2 | 1.1 | **Fase 1: PREPARACION PARA LA FORMULACION** |  | 31d | 2013-03-22 | 2013-05-03 |  |  |  |  | 376.4h | 17,257.2 |
| 3 | 1.1.1 | INICIO | milestone, manual | 0d | 2013-03-22 | 2013-03-22 |  |  |  | DIRECTOR PROYECTO |  |  |
| 4 | 1.1.2 | TERMINOS DE REFERENCIA. Objetivos. Condicionantes del Promotor | manual | 4d | 2013-03-22 | 2013-03-27 | 3 |  |  | SOCIOLOGO [25%]; INGENIERO EN MEDIO AMBIENTE [25%]; INGENIERO AGRONOMO [25%]; ECONOMISTA [50%]; DIRECTOR PROYECTO [15%] | 44.8h | 2,112 |
| 5 | 1.1.3 | FINANCIACION | manual | 3d | 2013-03-28 | 2013-03-31 | 3 |  |  | DIRECTOR PROYECTO [15%]; ECONOMISTA [50%]; INGENIERO AGRONOMO [25%]; SOCIOLOGO [25%] | 27.6h | 1,314 |
| 6 | 1.1.4 | COMITÉ DE COORDINACION. Constitución y organización | manual | 3d | 2013-04-01 | 2013-04-03 | 3 |  |  | DIRECTOR PROYECTO [25%] | 6h | 360 |
| 7 | 1.1.5 | EQUIPO DE FORMULACION. Recursos humanos y técnicos | manual | 7d | 2013-04-04 | 2013-04-12 | 6 |  |  | ADMINISTRATIVO [10%]; DIRECTOR PROYECTO [25%]; ECONOMISTA [20%]; SOCIOLOGO [10%]; INGENIERO EN MEDIO AMBIENTE [10%]; INGENIERO AGRONOMO [10%] | 47.6h | 2,284.8 |
| 8 | 1.1.6 | METODOLOGIA Y PLAN DE TRABAJO |  | 5d | 2013-04-15 | 2013-04-19 | 7 | 7d | 0d | ADMINISTRATIVO [50%]; DIRECTOR PROYECTO [50%]; ECONOMISTA; INGENIERO AGRONOMO [50%]; INGENIERO EN MEDIO AMBIENTE [50%]; SOCIOLOGO [50%] | 140h | 6,360 |
| 9 | 1.1.7 | DOC. Nº1: Fin P.F. | manual | 3d | 2013-04-20 | 2013-04-23 | 8 |  |  | ADMINISTRATIVO; DIRECTOR PROYECTO [50%]; ECONOMISTA [50%]; INGENIERO AGRONOMO [20%]; INGENIERO EN MEDIO AMBIENTE [20%]; SOCIOLOGO [20%] | 62.4h | 2,642.4 |
| 10 | 1.1.8 | Entrega al PROMOTOR. Doc. nº1 | milestone, manual | 0d | 2013-06-04 | 2013-06-04 | 9 |  |  | DIRECTOR PROYECTO [50%] |  |  |
| 11 | 1.1.9 | SEMINARIO DE LANZAMIENTO DEL PROYECTO |  | 1d | 2013-06-04 | 2013-06-04 | 10 | -23d | 0d | ADMINISTRATIVO; DIRECTOR PROYECTO; ECONOMISTA; INGENIERO AGRONOMO; INGENIERO EN MEDIO AMBIENTE; SOCIOLOGO | 48h | 2,184 |
| 12 | 1.2 | **FASE 2: ANALISIS Y DIAGNOSTICO** |  | 94d | 2013-05-03 | 2013-09-11 |  |  |  |  | 3962h | 165,328.8 |
| 13 | 1.2.1 | **ANALISIS ANTECEDENTES** |  | 10d | 2013-05-03 | 2013-05-16 | 11 |  |  |  | 315.2h | 14,088 |
| 14 | 1.2.1.1 | POLITICAS Y PROGRAMAS |  | 10d | 2013-06-05 | 2013-06-18 | 11 | -23d | 0d | DIRECTOR PROYECTO [20%]; INGENIERO AGRONOMO [50%]; ECONOMISTA [40%]; ADMINISTRATIVO [20%]; INGENIERO EN MEDIO AMBIENTE [20%] | 120h | 5,520 |
| 15 | 1.2.1.2 | MARCO LEGAL | manual | 15d | 2013-06-07 | 2013-06-27 | 11 |  |  | DIRECTOR PROYECTO [20%]; INGENIERO AGRONOMO [20%]; ADMINISTRATIVO [50%]; ECONOMISTA [40%] | 156h | 6,552 |
| 16 | 1.2.1.3 | BASES DE DATOS EXISTENTES | manual | 7d | 2013-06-28 | 2013-07-08 | 11 |  |  | DIRECTOR PROYECTO [20%]; INGENIERO AGRONOMO [50%] | 39.2h | 2,016 |
| 17 | 1.2.2 | **ANALISIS DEL AREA DEL PROYECTO** |  | 40d | 2013-07-09 | 2013-09-02 | 16, 11 |  |  |  | 2124h | 79,836 |
| 18 | 1.2.2.1 | ANALISIS DE RECURSOS NATURALES. INVENTARIO AMBIENTAL | manual | 35d | 2013-10-29 | 2013-12-16 |  |  |  | INGENIERO EN MEDIO AMBIENTE; INGENIERO AGRONOMO [50%]; ECONOMISTA [40%]; ADMINISTRATIVO [20%]; EXPERTO GIS [50%] | 728h | 26,040 |
| 19 | 1.2.2.2 | INFRAESTRUCTURAS Y SERVICIOS | manual | 20d | 2013-12-17 | 2014-01-13 | 18 |  |  | INGENIERO AGRONOMO; SOCIOLOGO [50%]; DIRECTOR PROYECTO [10%]; ADMINISTRATIVO [25%] | 296h | 13,440 |
| 20 | 1.2.2.3 | ANALISIS DE SECTORES PRODUCTIVOS | manual | 25d | 2014-01-14 | 2014-02-17 | 19, 14, 13, 15 |  |  | DIRECTOR PROYECTO [20%]; ECONOMISTA; ADMINISTRATIVO [50%]; INGENIERO AGRONOMO [50%] | 440h | 19,200 |
| 21 | 1.2.2.4 | ANALISIS POBLACIONAL | manual | 20d | 2014-06-27 | 2014-07-24 |  |  |  | SOCIOLOGO; INGENIERO AGRONOMO [25%]; ADMINISTRATIVO [25%] | 240h | 10,320 |
| 22 | 1.2.2.5 | SISTEMA GENERAL TERRITORIAL DE INFORMACION | manual | 21d | 2014-07-25 | 2014-08-22 | 16 |  |  | EXPERTO GIS; ADMINISTRATIVO [25%]; INGENIERO AGRONOMO [25%]; SOCIOLOGO | 420h | 10,836 |
| 23 | 1.2.3 | **ANALISIS DE AGENTES Y PARTICIPACION** |  | 44d | 2014-08-23 | 2014-10-22 |  |  |  |  | 1522.8h | 71,404.8 |
| 24 | 1.2.3.1 | IDENTIFICACIÓN DE AGENTES Y TIPOLOGIA | manual | 10d | 2014-12-16 | 2014-12-29 |  |  |  | DIRECTOR PROYECTO [50%]; SOCIOLOGO; INGENIERO AGRONOMO [50%]; ADMINISTRATIVO [25%] | 180h | 8,520 |
| 25 | 1.2.3.2 | ANALISIS DE LA PARTICIPACIÓN: ENCUESTA CON LOS AGENTES | manual | 60d | 2014-12-31 | 2015-03-24 | 24 |  |  | DIRECTOR PROYECTO [50%]; SOCIOLOGO; INGENIERO AGRONOMO [50%]; ADMINISTRATIVO [25%] | 1080h | 51,120 |
| 26 | 1.2.3.3 | TALLER DE PARTICIPACIÓN AGENTES PUBLICOS | manual | 1d | 2015-03-26 | 2015-03-26 |  |  |  | SOCIOLOGO; INGENIERO AGRONOMO [50%]; ADMINISTRATIVO [50%]; DIRECTOR PROYECTO [15%] | 17.2h | 744 |
| 27 | 1.2.3.4 | ANALISIS PROSPECTIVO SIN | manual | 6d | 2015-03-27 | 2015-04-03 | 26 |  |  | INGENIERO AGRONOMO [25%]; ECONOMISTA [50%]; SOCIOLOGO [25%]; INGENIERO EN MEDIO AMBIENTE [25%]; DIRECTOR PROYECTO [15%] | 67.2h | 3,168 |
| 28 | 1.2.3.5 | INFORME DE PARTICIPACION: Problemas, necesidades, oportunidades | manual | 10d | 2015-04-06 | 2015-04-17 | 27, 25 |  |  | DIRECTOR PROYECTO [30%]; INGENIERO AGRONOMO [25%]; ECONOMISTA [50%]; SOCIOLOGO [25%]; INGENIERO EN MEDIO AMBIENTE [25%]; ADMINISTRATIVO [50%] | 164h | 7,200 |
| 29 | 1.2.3.6 | PRESENTACIÓN Y VALIDACION DE CONCLUSIONES | manual | 2d | 2015-04-20 | 2015-04-21 | 28 |  |  | DIRECTOR PROYECTO [25%]; INGENIERO AGRONOMO [10%]; ECONOMISTA [20%]; SOCIOLOGO [10%]; ADMINISTRATIVO [25%] | 14.4h | 652.8 |
| 30 | 1.2.3.7 | CONCLUSIONES Y Doc. Nº2. Presentación al PROMOTOR | milestone, manual | 0d | 2015-04-22 | 2015-04-22 | 29 |  |  | DIRECTOR PROYECTO [50%]; INGENIERO AGRONOMO [25%]; ADMINISTRATIVO; ECONOMISTA [50%]; INGENIERO EN MEDIO AMBIENTE [20%] |  |  |
| 31 | 1.2.3.8 | Doc. nº2. REVISIÓN POR EL PROMOTOR | milestone, manual | 0d | 2015-04-22 | 2015-04-22 | 30, 29 |  |  |  |  |  |

| ID | WBS | Task | Type | Duration | Start | Finish | Predecessors | Total slack | Resources | Work | Cost |
| --- | --- | --- | --- | --- | --- | --- | --- | --- | --- | --- | --- |
| 32 | 1.3 | **FASE 3: DISEÑO DEL PROYECTO** |  | 92d | 2015-04-22 | 2015-08-27 |  | 0d |  | 1152h | 53,532 |
| 33 | 1.3.1 | OBJETIVOS Y METAS | manual | 1d | 2015-04-22 | 2015-04-22 | 31 |  | DIRECTOR PROYECTO; INGENIERO AGRONOMO [50%] | 12h | 672 |
| 34 | 1.3.2 | ALTERNATIVA ESTRATEGICAS: ANÁLISIS Y SELECCIÓN | manual | 7d | 2015-04-23 | 2015-05-01 | 33 |  | INGENIERO AGRONOMO; ECONOMISTA; DIRECTOR PROYECTO [50%]; INGENIERO EN MEDIO AMBIENTE [50%] | 168h | 8,148 |
| 35 | 1.3.3 | FORMULACION DE LOS COMPONENTES | manual | 60d | 2015-05-04 | 2015-07-24 | 34 |  | INGENIERO AGRONOMO [50%]; ECONOMISTA [50%]; INGENIERO EN MEDIO AMBIENTE [50%] | 720h | 33,120 |
| 36 | 1.3.4 | DISEÑO DE LA ORGANIZACIÓN | manual | 10d | 2015-07-27 | 2015-08-07 | 35 |  | INGENIERO AGRONOMO [50%]; INGENIERO EN MEDIO AMBIENTE [50%]; ECONOMISTA [50%] | 120h | 5,520 |
| 37 | 1.3.5 | SISTEMA DE SEGUIMIENTO Y EVALUACION. Programación de la ejecución. | manual | 7d | 2015-08-10 | 2015-08-18 | 36, 35 |  | ECONOMISTA [50%]; INGENIERO AGRONOMO [50%]; INGENIERO EN MEDIO AMBIENTE [50%] | 84h | 3,864 |
| 38 | 1.3.6 | PRESUPUESTACION | manual | 4d | 2015-08-10 | 2015-08-13 | 35, 36 |  | ECONOMISTA [50%]; INGENIERO AGRONOMO [50%]; INGENIERO EN MEDIO AMBIENTE [50%] | 48h | 2,208 |
| 39 | 1.3.7 | Doc. Nº 3. Entrega al PROMOTOR | milestone, manual | 0d | 2015-08-14 | 2015-08-14 | 38 |  | DIRECTOR PROYECTO |  |  |
| 40 | 1.3.8 | Doc. Nº 3. REVISION POR EL PROMOTOR | manual | 10d | 2015-08-14 | 2015-08-27 | 39 |  |  |  |  |
| 41 | 1.4 | **FASE 4: EVALUACION MULTICRITERIO** |  | 15d | 2015-08-28 | 2015-09-17 |  | 0d |  | 596h | 27,700 |
| 42 | 1.4.1 | EVALUACION ECONOMICO-FINANCIERA | manual | 10d | 2015-08-28 | 2015-09-10 | 40 |  | DIRECTOR PROYECTO [25%]; INGENIERO AGRONOMO [50%]; ECONOMISTA | 140h | 6,720 |
| 43 | 1.4.2 | EVALUACION SOCIAL Y CULTURAL | manual | 10d | 2015-08-28 | 2015-09-10 | 40 |  | DIRECTOR PROYECTO [25%]; INGENIERO AGRONOMO [50%]; ECONOMISTA [15%]; SOCIOLOGO | 152h | 7,260 |
| 44 | 1.4.3 | EVALUACION AMBIENTAL | manual | 10d | 2015-08-28 | 2015-09-10 | 40 |  | DIRECTOR PROYECTO [25%]; INGENIERO AGRONOMO [50%]; ECONOMISTA [15%]; SOCIOLOGO | 152h | 7,260 |
| 45 | 1.4.4 | EVALUACION DE RIESGOS, SEGURIDAD Y SALUD DEL PROYECTO | manual | 10d | 2015-08-28 | 2015-09-10 | 40 |  | TECNICOS DE APOYO; DIRECTOR PROYECTO [25%]; INGENIERO AGRONOMO [50%]; ECONOMISTA [15%] | 152h | 6,460 |
| 46 | 1.4.5 | Entrega Doc. nº 4. VIABILIDAD Y SOSTENIBLIDAD | milestone, manual | 0d | 2015-09-11 | 2015-09-11 | 45 |  |  |  |  |
| 47 | 1.4.6 | Revisión Doc. nº 4 | manual | 5d | 2015-09-11 | 2015-09-17 | 42, 43, 44 |  |  |  |  |
| 48 | 1.5 | **FASE 5: DOCUMENTACION** |  | 10d | 2015-09-18 | 2015-10-02 |  | 0d |  | 989.6h | 36,420 |
| 49 | 1.5.1 | MEMORIA | manual | 6d | 2015-09-18 | 2015-09-25 | 47 |  | INGENIERO AGRONOMO [50%]; ECONOMISTA [25%]; DIRECTOR PROYECTO [10%]; TECNICOS DE APOYO | 88.8h | 3,660 |
| 50 | 1.5.2 | ANEJOS A LA MEMORIA | manual | 10d | 2015-09-18 | 2015-10-01 | 47 |  | INGENIERO AGRONOMO [50%]; ECONOMISTA [25%]; DIRECTOR PROYECTO [10%]; INGENIERO EN MEDIO AMBIENTE [50%]; ADMINISTRATIVO [50%]; TECNICOS DE APOYO | 228h | 9,100 |
| 51 | 1.5.3 | PLANOS | manual | 10d | 2015-09-18 | 2015-10-01 | 47 |  | ADMINISTRATIVO [50%]; DIRECTOR PROYECTO [10%]; ECONOMISTA [25%]; EXPERTO GIS; INGENIERO AGRONOMO [50%]; INGENIERO EN MEDIO AMBIENTE [50%]; TECNICOS DE APOYO | 308h | 9,100 |
| 52 | 1.5.4 | PLIEGO DE CONDICIONES | manual | 3d | 2015-09-18 | 2015-09-22 | 47 |  | DIRECTOR PROYECTO [10%]; INGENIERO AGRONOMO [50%]; ECONOMISTA [25%]; ADMINISTRATIVO [50%]; INGENIERO EN MEDIO AMBIENTE [50%]; TECNICOS DE APOYO | 68.4h | 2,730 |
| 53 | 1.5.5 | PRESUPUESTO | manual | 3d | 2015-09-18 | 2015-09-22 | 47 |  | ADMINISTRATIVO [50%]; DIRECTOR PROYECTO [10%]; ECONOMISTA [25%]; INGENIERO AGRONOMO [50%]; INGENIERO EN MEDIO AMBIENTE [50%]; TECNICOS DE APOYO | 68.4h | 2,730 |
| 54 | 1.5.6 | ESTUDIO DE SEGURIDAD Y SALUD | manual | 10d | 2015-09-18 | 2015-10-01 | 47 |  | ADMINISTRATIVO [50%]; DIRECTOR PROYECTO [10%]; ECONOMISTA [25%]; INGENIERO AGRONOMO [50%]; INGENIERO EN MEDIO AMBIENTE [50%]; TECNICOS DE APOYO | 228h | 9,100 |
| 55 | 1.5.7 | Entrega del proyecto | milestone, manual | 0d | 2015-10-02 | 2015-10-02 | 54, 49, 50, 51, 52, 53 |  |  |  |  |
