Schedule from MS Project, 2013-03-30 to 2014-04-02, costs in €.

## Calendars

- Standard: Mon-Fri 08:00-12:00, 13:00-17:00; Sat-Sun off.

## Resources

| Resource | Rate |
| --- | --- |
| DIRECTOR PROYECTO | 60 |
| INGENIERO AGRONOMO | 48 |
| EXPERTO GIS | 47 |
| ECONOMISTA | 45 |
| SOCIOLOGO | 45 |
| INGENIERO EN MEDIOAMBIENTE | 45 |
| ADMINISTRATIVO | 30 |
| TECNICOS DE APOYO | 35 |

## Schedule

| ID | WBS | Task | Type | Duration | Start | Finish | Predecessors | Resources | Work | Cost |
| --- | --- | --- | --- | --- | --- | --- | --- | --- | --- | --- |
| 1 | 1 | **TOTAL PROYECTO** |  | 242d | 2013-03-30 | 2014-03-03 |  |  | 4984.2h | 226,696.8 |
| 2 | 1.1 | **FASE 1: PREPARACION PARA LA FORMULACION** |  | 31d | 2013-03-30 | 2013-05-10 |  |  | 660.4h | 29,970 |
| 3 | 1.1.1 | INICIO | milestone, manual | 0d | 2013-03-30 | 2013-03-30 |  | DIRECTOR PROYECTO |  |  |
| 4 | 1.1.2 | TERMINOS DE REFERENCIA. Objetivos. Condicionantes del Promotor | manual | 10d | 2013-04-01 | 2013-04-12 |  | DIRECTOR PROYECTO [25%]; INGENIERO AGRONOMO [25%]; ADMINISTRATIVO [50%]; SOCIOLOGO [25%]; INGENIERO EN MEDIOAMBIENTE [25%] | 120h | 5,160 |
| 5 | 1.1.3 | FINANCIACION | manual | 7d | 2013-04-01 | 2013-04-09 |  | DIRECTOR PROYECTO [15%]; INGENIERO AGRONOMO [25%]; ECONOMISTA [50%]; SOCIOLOGO [25%] | 64.4h | 3,066 |
| 6 | 1.1.4 | COMITÉ DE COORDINACION. Constitución y organización | manual | 5d | 2013-04-01 | 2013-04-05 |  | DIRECTOR PROYECTO [25%] | 10h | 600 |
| 7 | 1.1.5 | EQUIPO DE FORMULACION. Recursos humanos y técnicos | manual | 15d | 2013-04-08 | 2013-04-26 | 4SS, 6 | DIRECTOR PROYECTO [25%]; ECONOMISTA [20%]; SOCIOLOGO [10%]; INGENIERO AGRONOMO [10%]; INGENIERO EN MEDIOAMBIENTE [10%]; ADMINISTRATIVO [10%] | 102h | 4,896 |
| 8 | 1.1.6 | METODOLOGIA Y PLAN DE TRABAJO | manual | 10d | 2013-04-22 | 2013-05-03 | 7FS-5d, 5, 4, 6SS | INGENIERO AGRONOMO [50%]; DIRECTOR PROYECTO [50%]; ECONOMISTA; SOCIOLOGO [50%]; INGENIERO EN MEDIOAMBIENTE [50%]; ADMINISTRATIVO [50%] | 240h | 10,920 |
| 9 | 1.1.7 | DOC. Nº1: Fin P.F. | manual | 5d | 2013-05-06 | 2013-05-10 | 8 | DIRECTOR PROYECTO [50%]; ECONOMISTA [50%]; SOCIOLOGO [20%]; INGENIERO EN MEDIOAMBIENTE [20%]; INGENIERO AGRONOMO [20%]; ADMINISTRATIVO | 84h | 3,504 |
| 10 | 1.1.8 | Entrega al PROMOTOR. Doc. nº1 | milestone, manual | 0d | 2013-05-13 | 2013-05-13 | 9 | DIRECTOR PROYECTO [50%] |  |  |
| 11 | 1.1.9 | SEMINARIO DE LANZAMIENTO DEL PROYECTO | manual | 1d | 2013-05-13 | 2013-05-13 | 10 | DIRECTOR PROYECTO; ECONOMISTA; SOCIOLOGO; INGENIERO EN MEDIOAMBIENTE; ADMINISTRATIVO; INGENIERO AGRONOMO | 40h | 1,824 |
| 12 | 1.2 | **FASE 2: ANALISIS Y DIAGNOSTICO** |  | 94d | 2013-05-14 | 2013-09-20 |  |  | 2324.2h | 105,784.8 |
| 13 | 1.2.1 | **ANALISIS ANTECEDENTES** |  | 15d | 2013-05-14 | 2013-06-03 | 11 |  | 307.2h | 13,776 |
| 14 | 1.2.1.1 | POLITICAS Y PROGRAMAS | manual | 10d | 2013-07-22 | 2013-08-02 | 11 | DIRECTOR PROYECTO [20%]; INGENIERO AGRONOMO [50%]; ECONOMISTA [40%]; ADMINISTRATIVO [20%]; INGENIERO EN MEDIOAMBIENTE [20%] | 120h | 5,520 |
| 15 | 1.2.1.2 | MARCO LEGAL | manual | 15d | 2013-05-14 | 2013-06-03 | 11 | DIRECTOR PROYECTO [20%]; INGENIERO AGRONOMO [20%]; ADMINISTRATIVO [50%]; ECONOMISTA [40%] | 152h | 6,432 |
| 16 | 1.2.1.3 | BASES DE DATOS EXISTENTES | manual | 7d | 2013-05-14 | 2013-05-22 | 11 | DIRECTOR PROYECTO [20%]; INGENIERO AGRONOMO [50%] | 35.2h | 1,824 |
| 17 | 1.2.2 | **ANALISIS DEL AREA DEL PROYECTO** |  | 80d | 2013-05-22 | 2013-09-11 | 11, 16 |  | 744.2h | 32,346 |
| 18 | 1.2.2.1 | ANALISIS DE RECURSOS NATURALES. INVENTARIO AMBIENTAL | manual | 35d | 2013-05-23 | 2013-07-15 |  | INGENIERO EN MEDIOAMBIENTE; INGENIERO AGRONOMO [50%]; ECONOMISTA [40%]; ADMINISTRATIVO [20%] | 238.2h | 10,314 |
| 19 | 1.2.2.2 | INFRAESTRUCTURAS Y SERVICIOS | manual | 20d | 2013-07-23 | 2013-08-26 | 18 | DIRECTOR PROYECTO [10%]; ADMINISTRATIVO [25%]; SOCIOLOGO [50%]; INGENIERO AGRONOMO | 56h | 2,160 |
| 20 | 1.2.2.3 | ANALISIS DE SECTORES PRODUCTIVOS | manual | 25d | 2013-10-01 | 2013-11-04 | 14, 13, 15, 19 | DIRECTOR PROYECTO [20%]; ECONOMISTA; INGENIERO AGRONOMO [50%]; ADMINISTRATIVO [50%] | 112h | 5,208 |
| 21 | 1.2.2.4 | ANALISIS POBLACIONAL | manual | 20d | 2013-05-23 | 2013-06-26 |  | INGENIERO AGRONOMO [25%]; ADMINISTRATIVO [25%]; SOCIOLOGO | 87h | 3,522 |
| 22 | 1.2.2.5 | SISTEMA GENERAL TERRITORIAL DE INFORMACION | manual | 21d | 2013-05-23 | 2013-06-20 | 16 | INGENIERO AGRONOMO [25%]; ADMINISTRATIVO [25%]; EXPERTO GIS; SOCIOLOGO | 251h | 11,142 |
| 23 | 1.2.3 | **ANALISIS DE AGENTES Y PARTICIPACION** |  | 82d | 2013-05-30 | 2013-09-20 |  |  | 1272.8h | 59,662.8 |
| 24 | 1.2.3.1 | IDENTIFICACIÓN DE AGENTES Y TIPOLOGIA | manual | 10d | 2013-05-30 | 2013-06-12 | 22SS+5d | DIRECTOR PROYECTO [50%]; INGENIERO AGRONOMO [50%]; ADMINISTRATIVO [25%]; SOCIOLOGO | 152h | 7,176 |
| 25 | 1.2.3.2 | ANALISIS DE LA PARTICIPACIÓN: ENCUESTA CON LOS AGENTES | manual | 60d | 2013-06-13 | 2013-09-04 | 24 | DIRECTOR PROYECTO [50%]; INGENIERO AGRONOMO [50%]; ADMINISTRATIVO [25%]; SOCIOLOGO | 896h | 42,432 |
| 26 | 1.2.3.3 | TALLER DE PARTICIPACIÓN AGENTES PUBLICOS | manual | 1d | 2013-06-27 | 2013-06-27 | 25SS+10d | INGENIERO AGRONOMO [50%]; ADMINISTRATIVO [50%]; DIRECTOR PROYECTO [15%]; SOCIOLOGO | 9.2h | 384 |
| 27 | 1.2.3.4 | ANALISIS PROSPECTIVO SIN | manual | 6d | 2013-06-28 | 2013-07-05 | 26 | INGENIERO AGRONOMO [25%]; ECONOMISTA [50%]; SOCIOLOGO [25%]; INGENIERO EN MEDIOAMBIENTE [25%]; DIRECTOR PROYECTO [15%] | 51.2h | 2,448 |
| 28 | 1.2.3.5 | INFORME DE PARTICIPACION: Problemas, necesidades, oportunidades | manual | 10d | 2013-09-05 | 2013-09-18 | 27, 25 | DIRECTOR PROYECTO [30%]; INGENIERO AGRONOMO [25%]; ECONOMISTA [50%]; SOCIOLOGO [25%]; INGENIERO EN MEDIOAMBIENTE [25%]; ADMINISTRATIVO [50%] | 150h | 6,570 |
| 29 | 1.2.3.6 | PRESENTACIÓN Y VALIDACION DE CONCLUSIONES | manual | 2d | 2013-09-19 | 2013-09-20 | 28 | DIRECTOR PROYECTO [25%]; INGENIERO AGRONOMO [10%]; ECONOMISTA [20%]; SOCIOLOGO [10%]; ADMINISTRATIVO [25%] | 14.4h | 652.8 |
| 30 | 1.2.4 | CONCLUSIONES Y Doc. Nº2. Presentación al PROMOTOR | milestone, manual | 0d | 2013-09-23 | 2013-09-23 | 29 | DIRECTOR PROYECTO [50%]; INGENIERO AGRONOMO [25%]; ADMINISTRATIVO; ECONOMISTA [50%]; INGENIERO EN MEDIOAMBIENTE [20%] |  |  |
| 31 | 1.2.5 | Doc. nº2. REVISIÓN POR EL PROMOTOR | milestone, manual | 0d | 2013-09-23 | 2013-09-23 | 29, 30 |  |  |  |

| ID | WBS | Task | Type | Duration | Start | Finish | Predecessors | Resources | Work | Cost |
| --- | --- | --- | --- | --- | --- | --- | --- | --- | --- | --- |
| 32 | 1.3 | **FASE 3: DISEÑO DEL PROYECTO** |  | 92d | 2013-09-23 | 2014-01-28 |  |  | 1112h | 51,732 |
| 33 | 1.3.1 | OBJETIVOS Y METAS | manual | 1d | 2013-09-23 | 2013-09-23 | 31 | DIRECTOR PROYECTO; INGENIERO AGRONOMO [50%] | 12h | 672 |
| 34 | 1.3.2 | ALTERNATIVA ESTRATEGICAS: ANÁLISIS Y SELECCIÓN | manual | 7d | 2013-09-24 | 2013-10-02 | 33 | DIRECTOR PROYECTO [50%]; INGENIERO AGRONOMO; ECONOMISTA; INGENIERO EN MEDIOAMBIENTE [50%] | 168h | 8,148 |
| 35 | 1.3.3 | FORMULACION DE LOS COMPONENTES | manual | 60d | 2013-10-03 | 2013-12-25 | 34 | INGENIERO AGRONOMO [50%]; ECONOMISTA [50%]; INGENIERO EN MEDIOAMBIENTE [50%] | 720h | 33,120 |
| 36 | 1.3.4 | DISEÑO DE LA ORGANIZACIÓN | manual | 10d | 2013-12-26 | 2014-01-08 | 35 | INGENIERO AGRONOMO [50%]; ECONOMISTA [50%]; INGENIERO EN MEDIOAMBIENTE [50%] | 80h | 3,720 |
| 37 | 1.3.5 | SISTEMA DE SEGUIMIENTO Y EVALUACION. Programación de la ejecución. | manual | 7d | 2014-02-05 | 2014-02-13 | 36, 35 | INGENIERO AGRONOMO [50%]; ECONOMISTA [50%]; INGENIERO EN MEDIOAMBIENTE [50%] | 84h | 3,864 |
| 38 | 1.3.6 | PRESUPUESTACION | manual | 4d | 2014-02-05 | 2014-02-10 | 35, 36 | INGENIERO AGRONOMO [50%]; ECONOMISTA [50%]; INGENIERO EN MEDIOAMBIENTE [50%] | 48h | 2,208 |
| 39 | 1.3.7 | Doc. Nº 3. Entrega al PROMOTOR | milestone, manual | 0d | 2014-02-11 | 2014-02-11 | 38 | DIRECTOR PROYECTO |  |  |
| 40 | 1.3.8 | Doc. Nº 3. REVISION POR EL PROMOTOR | manual | 10d | 2014-02-11 | 2014-02-24 | 39 |  |  |  |
| 41 | 1.4 | **FASE 4: EVALUACION MULTICRITERIO** |  | 15d | 2014-02-24 | 2014-03-17 |  |  | 480h | 22,240 |
| 42 | 1.4.1 | EVALUACION ECONOMICO-FINANCIERA | manual | 10d | 2014-02-25 | 2014-03-10 | 40 | DIRECTOR PROYECTO [25%]; INGENIERO AGRONOMO [50%]; ECONOMISTA | 140h | 6,720 |
| 43 | 1.4.2 | EVALUACION SOCIAL Y CULTURAL | manual | 10d | 2014-02-25 | 2014-03-10 | 40 | DIRECTOR PROYECTO [25%]; INGENIERO AGRONOMO [50%]; ECONOMISTA [15%]; SOCIOLOGO | 140h | 6,720 |
| 44 | 1.4.3 | EVALUACION AMBIENTAL | manual | 10d | 2014-02-25 | 2014-03-10 | 40 | DIRECTOR PROYECTO [25%]; INGENIERO AGRONOMO [50%]; ECONOMISTA [15%]; INGENIERO EN MEDIOAMBIENTE | 100h | 4,800 |
| 45 | 1.4.4 | EVALUACION DE RIESGOS, SEGURIDAD Y SALUD DEL PROYECTO | manual | 10d | 2014-02-25 | 2014-03-10 | 40 | DIRECTOR PROYECTO [25%]; INGENIERO AGRONOMO [50%]; ECONOMISTA [15%]; TECNICOS DE APOYO | 100h | 4,000 |
| 46 | 1.4.5 | Entrega Doc. nº 4. VIABILIDAD Y SOSTENIBLIDAD | milestone, manual | 0d | 2014-03-11 | 2014-03-11 | 45 |  |  |  |
| 47 | 1.4.6 | Revisión Doc. nº 4 | manual | 5d | 2014-03-11 | 2014-03-17 | 42, 43, 44 |  |  |  |
| 48 | 1.5 | **FASE 5: DOCUMENTACION** |  | 10d | 2014-03-17 | 2014-03-31 |  |  | 407.6h | 16,970 |
| 49 | 1.5.1 | MEMORIA | manual | 6d | 2014-03-18 | 2014-03-25 | 47 | INGENIERO AGRONOMO [50%]; ECONOMISTA [25%]; DIRECTOR PROYECTO [10%]; TECNICOS DE APOYO | 34.8h | 1,398 |
| 50 | 1.5.2 | ANEJOS A LA MEMORIA | manual | 10d | 2014-03-18 | 2014-04-01 | 47 | INGENIERO AGRONOMO [50%]; ECONOMISTA [25%]; DIRECTOR PROYECTO [10%]; INGENIERO EN MEDIOAMBIENTE [50%]; ADMINISTRATIVO [50%]; TECNICOS DE APOYO | 134h | 5,274 |
| 51 | 1.5.3 | PLANOS | manual | 10d | 2014-03-18 | 2014-03-31 | 47 | INGENIERO AGRONOMO [50%]; ECONOMISTA [25%]; DIRECTOR PROYECTO [10%]; INGENIERO EN MEDIOAMBIENTE [50%]; ADMINISTRATIVO [50%]; TECNICOS DE APOYO; EXPERTO GIS | 162h | 7,070 |
| 52 | 1.5.4 | PLIEGO DE CONDICIONES | manual | 3d | 2014-03-18 | 2014-03-20 | 47 | INGENIERO AGRONOMO [50%]; ECONOMISTA [25%]; DIRECTOR PROYECTO [10%]; INGENIERO EN MEDIOAMBIENTE [50%]; ADMINISTRATIVO [50%]; TECNICOS DE APOYO | 48.4h | 1,874 |
| 53 | 1.5.5 | PRESUPUESTO | manual | 3d | 2014-03-18 | 2014-03-20 | 47 | ECONOMISTA [25%]; INGENIERO AGRONOMO [50%]; DIRECTOR PROYECTO [10%]; INGENIERO EN MEDIOAMBIENTE [50%]; ADMINISTRATIVO [50%]; TECNICOS DE APOYO | 2.4h | 144 |
| 54 | 1.5.6 | ESTUDIO DE SEGURIDAD Y SALUD | manual | 10d | 2014-03-18 | 2014-03-31 | 47 | INGENIERO AGRONOMO [50%]; ECONOMISTA [25%]; DIRECTOR PROYECTO [10%]; INGENIERO EN MEDIOAMBIENTE [50%]; ADMINISTRATIVO [50%]; TECNICOS DE APOYO | 26h | 1,210 |
| 55 | 1.5.7 | Entrega del proyecto | milestone, manual | 0d | 2014-04-02 | 2014-04-02 | 54, 49, 50, 51, 52, 53 |  |  |  |
